# Предварительный план2007

Schedule from MS Project, 2013-04-22 to 2014-05-06, A marks actual dates.

## Calendars

- Стандартный: Mon-Fri 09:00-13:00, 14:00-18:00; Sat-Sun off. Exceptions (off unless hours are given): 2013-05-01 to 2013-05-05 (Первое мая), 2013-05-09 to 2013-05-12 (Девятое мая).

## Resources

| Resource |
| --- |
| Шилин Роман |
| Аналитик |
| Андрей Пирожков |
| Тугушев Илья |
| Денис Митавский |
| Алексей Львов |
| Андрей Карандей |
| Валерий Мацукевич |
| Java разработчик3 |
| Java разработчик4 |
| WEB-дизайнер |
| Влад Симоненко |
| Андрей Цветков |
| Java разработчик5 |
| Тест Аналитик |
| Java разработчик6 |
| Тестировщик |
| Технический писатель |
| Технолог - администратор |
| Технический писатель2 |
| Системный аналитик1 |
| Системный аналитик2 |
| Системный аналитик3 |
| Системный аналитик4 |
| Владимир Панов |
| Сергей Кашанский |
| Роман Митинков |
| Роман Болотов |
| Глеб Наздрачев |
| Евгения Капустина |
| Эдуард Михайлов |
| Тимофей Билый |

## Schedule

| ID | WBS | Task | Type | Duration | Start | Finish | Predecessors | Complete | Remaining | Total slack | Free slack | Constraint | Resources | Work | Actual work |
| --- | --- | --- | --- | --- | --- | --- | --- | --- | --- | --- | --- | --- | --- | --- | --- |
| 1 | 1 | **Разработка второй версии CM4/5** |  | 267d? | 2013-04-22 A | 2014-05-06 |  | 9% | 243.06d? | 0d |  |  |  | 22509.6h | 1598.34h |
| 2 | 1.1 | Принято решение о начале разработки | milestone | 0d | 2013-04-22 | 2013-04-22 |  |  |  | 0d |  | start no earlier than 2013-04-22 |  |  |  |
| 3 | 1.2 | Управление проектом |  | 267d | 2013-04-22 | 2014-05-06 | 2 |  |  | 0d |  |  | Шилин Роман | 2136h |  |
| 4 | 1.3 | **Управление требованиями** |  | 193d | 2013-05-27 A | 2014-02-19 | 2 | 6% | 181.71d | 54d |  |  | Аналитик | 3463.2h | 178.34h |
| 5 | 1.3.1 | Выделен аналитик на проект | milestone | 0d | 2013-05-27 A | 2013-05-27 A |  | 100% |  |  |  | start no earlier than 2013-05-27 |  |  |  |
| 6 | 1.3.2 | Формирование скоупа проекта _ верхний уровень |  | 15d | 2013-05-27 A | 2013-06-14 | 5 | 73% | 4d | 55d | 0d |  | Евгения Капустина | 120h | 88h |
| 7 | 1.3.3 | Скоуп на систему сформирован и утвержден | milestone | 0d | 2013-06-21 | 2013-06-21 | 6FS+5d |  |  | 55d | 0d |  |  |  |  |
| 8 | 1.3.4 | Сопровождение требований |  | 173d | 2013-06-24 | 2014-02-19 | 5, 7 |  |  | 55d |  |  | Эдуард Михайлов; Евгения Капустина [30%] | 1799.2h |  |
| 9 | 1.4 | **Создание модуля "Делопроизводство" (документоориентированная среда)** |  | 235d? | 2013-04-22 A | 2014-03-21 |  | 11% | 208.8d? | 32d |  |  |  | 16462.4h | 1420h |
| 10 | 1.4.1 | Первичные требования для создания модуля "Делопроизводство" подготовлены | milestone | 0d | 2013-04-22 | 2013-04-22 | 2 |  |  | 81.06d | 0d | finish no earlier than 2012-04-02 |  |  |  |
| 11 | 1.4.2 | **Апробация идей прототипа** |  | 24d | 2013-04-29 A | 2013-06-06 |  | 99% | 0d | 238d |  |  |  | 144h | 144h |
| 12 | 1.4.2.1 | Пирожков доступен | milestone | 0d | 2013-06-03 | 2013-06-03 |  |  |  | 243d |  | start no earlier than 2013-06-03 |  |  |  |
| 13 | 1.4.2.2 | Проведение предварительных испытаний системы |  | 9d | 2013-04-29 A | 2013-05-16 A | 10FS+5d | 100% |  |  |  |  | Андрей Цветков | 72h | 72h |
| 14 | 1.4.2.3 | Описание обработки ВХ. Док. На примере технологий прототипа |  | 9d | 2013-05-20 A | 2013-06-06 A |  | 100% |  |  |  | start no earlier than 2013-05-20 | Андрей Пирожков | 72h | 72h |
| 15 | 1.4.3 | **Настройка инфраструктуры** |  | 37d | 2013-05-20 A | 2013-07-09 | 24 | 47% | 19.73d | 17.88d | 0d |  |  | 120h | 56h |
| 16 | 1.4.3.1 | Настройка непрерывной интеграции |  | 4d | 2013-05-20 A | 2013-05-23 A |  | 100% |  |  |  |  | Тугушев Илья | 32h | 32h |
| 17 | 1.4.3.2 | Поддержка UNIT-тестирования и интеграционного тестирования на уроне среды непрерывной интеграции |  | 5d | 2013-06-04 | 2013-06-10 |  |  |  | 71d |  | start no earlier than 2013-06-04 | Тугушев Илья | 40h |  |
| 18 | 1.4.3.3 | Репакеджинг проекта |  | 3d | 2013-05-27 A | 2013-05-29 A |  | 100% |  |  |  | start no earlier than 2013-05-27 | Сергей Кашанский | 24h | 24h |
| 19 | 1.4.3.4 | Автоматическое заполнение параметров JDBC через Maven |  | 3d | 2013-07-05 | 2013-07-09 | 30 |  |  | 50d | 0d |  | Андрей Цветков | 24h |  |
| 20 | 1.4.4 | **Проектирование и формирование ядра системы** |  | 144d? | 2013-04-22 A | 2013-11-14 | 10 | 19% | 116.92d? | 55d | 0d |  |  | 6178.4h | 980h |
| 21 | 1.4.4.1 | **Определение структуры модуля Делопроизводство** |  | 25d | 2013-04-22 A | 2013-05-31 A |  | 100% |  |  |  |  |  | 352h | 352h |
| 22 | 1.4.4.1.1 | Разбивка на слои |  | 5d | 2013-04-22 A | 2013-04-26 A |  | 100% |  |  |  |  | Денис Митавский [50%]; Андрей Пирожков [50%] | 40h | 40h |
| 23 | 1.4.4.1.2 | Конфигурации, загрузка и инициализация системы в базовой конфигурации |  | 5d | 2013-04-29 A | 2013-05-08 A | 22 | 100% |  |  |  |  | Валерий Мацукевич; Денис Митавский [50%] | 60h | 60h |
| 24 | 1.4.4.1.3 | Базовая конфигурация объектов системы |  | 5d | 2013-05-13 A | 2013-05-17 A | 22, 23 | 100% |  |  |  |  | Денис Митавский [50%]; Валерий Мацукевич | 60h | 60h |
| 25 | 1.4.4.1.4 | Юнит-тестирование - базис |  | 6d | 2013-05-17 A | 2013-05-24 A | 13 | 100% |  |  |  |  | Денис Митавский [50%]; Андрей Цветков | 72h | 72h |
| 26 | 1.4.4.1.5 | Базовая имплементация слоя DAO |  | 5d | 2013-05-20 A | 2013-05-24 A | 24 | 100% |  |  |  |  | Валерий Мацукевич | 40h | 40h |
| 27 | 1.4.4.1.6 | Обеспечение программных компонет верификации первой очереди |  | 5d | 2013-05-27 A | 2013-05-31 A | 26 | 100% |  |  |  |  | Валерий Мацукевич; Андрей Цветков | 80h | 80h |

Notes:
- 27: UNIT тестирование в рамках наработанного кода

| ID | WBS | Task | Type | Duration | Start | Finish | Predecessors | Complete | Remaining | Total slack | Free slack | Constraint | Resources | Work | Actual work |
| --- | --- | --- | --- | --- | --- | --- | --- | --- | --- | --- | --- | --- | --- | --- | --- |
| 28 | 1.4.4.2 | **DAO** |  | 36d? | 2013-06-03 A | 2013-07-22 | 26, 27 | 84% | 5.81d? | 84d |  |  |  | 224h | 184h |
| 29 | 1.4.4.2.1 | DAO для бизнес-объектов |  | 7d | 2013-06-03 A | 2013-06-11 A |  | 100% |  |  |  |  | Валерий Мацукевич | 56h | 56h |
| 30 | 1.4.4.2.2 | DAO для коллекций |  | 13d | 2013-06-12 A | 2013-07-04 A | 29 | 100% |  |  |  |  | Андрей Цветков | 104h | 104h |
| 31 | 1.4.4.2.3 | Функционал системы готов для проведения проектирования интеграции с GUI СМ4 | milestone | 0d | 2013-06-24 A | 2013-06-24 A | 29, 30 | 100% |  |  |  |  |  |  |  |
| 32 | 1.4.4.2.4 | DAO - утилитарные поля |  | 6d | 2013-06-25 A | 2013-07-08 A | 30 | 100% |  |  |  |  | Денис Митавский [50%] | 24h | 24h |
| 33 | 1.4.4.2.5 | DAO - кэш уровня транзакции |  | 5d? | 2013-07-16 | 2013-07-22 | 108 |  |  | 85d | 0d |  | Валерий Мацукевич | 40h |  |
| 34 | 1.4.4.3 | CRUD-сервис для бизнес-объектов |  | 10d | 2013-06-11 A | 2013-06-24 A | 30FF | 100% |  |  |  |  | Андрей Цветков | 80h | 80h |
| 35 | 1.4.4.4 | Поддержка отсортированных дочерних бизнес-объектов |  | 5d | 2013-07-23 | 2013-07-29 | 33 |  |  | 85d | 0d |  | Валерий Мацукевич | 40h |  |
| 36 | 1.4.4.5 | Настройка Datasources/Jaas сервера приложений средствами Maven |  | 2d | 2013-07-05 A | 2013-07-08 A | 30 | 100% |  |  |  |  | Сергей Кашанский | 16h | 16h |
| 37 | 1.4.4.6 | Рефакторинг |  | 4d | 2013-07-03 A | 2013-07-08 A | 26 | 100% |  |  |  | start no earlier than 2013-07-03 | Валерий Мацукевич | 32h | 32h |
| 38 | 1.4.4.7 | **Права доступа** |  | 43d | 2013-06-12 A | 2013-08-09 |  | 44% | 24d | 106d |  |  |  | 248h | 76h |
| 39 | 1.4.4.7.1 | Права - оптимизация хранения (проектирование) |  | 24d | 2013-06-12 A | 2013-07-15 | 29 | 79% | 5d | 39d | 0d |  | Андрей Пирожков [50%] | 96h | 76h |
| 40 | 1.4.4.7.2 | Описание существующими декларативными средствами конфигурации |  | 9d | 2013-07-16 | 2013-07-26 | 39, 19 |  |  | 107d | 0d |  | Андрей Цветков | 72h |  |
| 41 | 1.4.4.7.3 | Автофильтрация |  | 10d | 2013-07-29 | 2013-08-09 | 40 |  |  | 107d | 0d |  | Андрей Цветков | 80h |  |
| 42 | 1.4.4.8 | **Workflow - интеграция с Activiti** |  | 54d | 2013-06-07 A | 2013-08-21 | 14 | 10% | 48.6d | 36d | 3d |  |  | 280h | 12h |
| 43 | 1.4.4.8.1 | Проектирование |  | 10d | 2013-06-07 A | 2013-07-24 | 39 | 30% | 7d | 36d | 0d |  | Андрей Пирожков [50%] | 40h | 12h |
| 44 | 1.4.4.8.2 | Разработка |  | 20d | 2013-07-25 | 2013-08-21 | 43 |  |  | 39d |  |  | Андрей Пирожков [50%]; Сергей Кашанский | 240h |  |
| 45 | 1.4.4.9 | Наследование ??? |  | 9d | 2013-07-25 | 2013-08-06 | 43 |  |  | 128d |  |  | Андрей Пирожков [50%] | 36h |  |
| 46 | 1.4.4.10 | **Коллекции** |  | 25d | 2013-05-29 A | 2013-07-02 |  | 62% | 9.48d | 119d |  |  |  | 320h | 188h |
| 47 | 1.4.4.10.1 | Коллекции - конфигурация |  | 3d | 2013-05-29 A | 2013-05-31 A |  | 100% |  |  |  |  | Денис Митавский | 24h | 24h |
| 48 | 1.4.4.10.2 | DAO - язык запросов коллекций |  | 12d | 2013-05-29 A | 2013-06-17 A | 47 | 100% |  |  |  |  | Сергей Кашанский; Денис Митавский [50%] | 140h | 140h |
| 49 | 1.4.4.10.3 | Сервис получения и получения счетчиков |  | 3d | 2013-05-29 A | 2013-05-31 A | 47 | 100% |  |  |  |  | Сергей Кашанский | 24h | 24h |
| 50 | 1.4.4.10.4 | ПКД |  | 11d | 2013-06-18 | 2013-07-02 | 48 |  |  | 120d | 0d |  | Андрей Пирожков [50%]; Сергей Кашанский | 132h |  |
| 51 | 1.4.4.11 | **Действия** |  | 18d | 2013-08-12 | 2013-09-04 |  |  |  | 106d |  |  |  | 184h |  |
| 52 | 1.4.4.11.1 | Концепция |  | 4d | 2013-08-12 | 2013-08-15 | 47, 41 |  |  | 107d | 0d |  | Андрей Пирожков [50%] | 16h |  |
| 53 | 1.4.4.11.2 | Реализация |  | 14d | 2013-08-16 | 2013-09-04 | 52 |  |  | 107d |  |  | Андрей Карандей; Андрей Пирожков [50%] | 168h |  |

Notes:
- 34: - проектирование базового API / - имплементация
- 35: Для отображени и поддержания заданного порядка следования объектов
- 39: Права доступа - оптимизация подхода, / подбор других названий сущностей (таблицы) переименовать таблицы и улучшить производительность
- 40: Права доступа - описание существующими декларативными средствами конфигурации / (для автоматического создания таблиц) + / конфигурирование под-запроса для фильтрации - там же
- 41: Права доступа - авто-фильтрация / + "внедрение в под-запросы"
- 42: Задачи: / - модель процесса (BPMN) / - Имплементация WF - сервиса , взаимодействие системы с Аctiviti
- 45: Архитектура - форма хранения данных (с учетом производительности) / Наследование типов объектов - уровень DAO
- 48: DAO - язык запросов коллекций
- 49: Коллекции - сервис получения и получения счетчиков
- 50: Для поддержания реализации избранного, отметок о прочтении и т.д.

| ID | WBS | Task | Type | Duration | Start | Finish | Predecessors | Complete | Remaining | Total slack | Free slack | Constraint | Resources | Work | Actual work |
| --- | --- | --- | --- | --- | --- | --- | --- | --- | --- | --- | --- | --- | --- | --- | --- |
| 54 | 1.4.4.12 | **Бизнес-объекты (иерархии доменных объектов)** |  | 16d | 2013-08-06 | 2013-08-28 |  |  |  | 112d |  |  |  | 128h |  |
| 55 | 1.4.4.12.1 | Проектирование |  | 6d | 2013-08-06 | 2013-08-14 | 56SF |  |  | 122d |  |  | Сергей Кашанский | 48h |  |
| 56 | 1.4.4.12.2 | Реализация |  | 10d | 2013-08-14 | 2013-08-28 | 85SF |  |  | 112d | 0d |  | Сергей Кашанский | 80h |  |
| 57 | 1.4.4.13 | **Слой сопряжения GUI CM4** |  | 103d | 2013-06-25 | 2013-11-14 |  |  |  | 55d |  |  |  | 1394.4h |  |
| 58 | 1.4.4.13.1 | REST-протокол для АРМа - проектирование |  | 3d | 2013-06-25 | 2013-06-27 | 31 |  |  | 78d | 23d |  | Тугушев Илья; Денис Митавский [20%]; Андрей Пирожков [20%] | 33.6h |  |
| 59 | 1.4.4.13.2 | Проектиирование выполнено и ресурсы достуны | milestone | 0d | 2013-07-31 | 2013-07-31 |  |  |  | 55d | 0d | start no earlier than 2013-07-31 |  |  |  |
| 60 | 1.4.4.13.3 | Реализация коннекторов к платформе |  | 70d | 2013-07-31 | 2013-11-05 | 58, 59 |  |  | 55d | 0d |  | Тугушев Илья [33%]; Роман Болотов; Глеб Наздрачев | 1304.8h |  |
| 61 | 1.4.4.13.4 | Сопряжение - работа с вложениями |  | 7d | 2013-11-06 | 2013-11-14 | 65, 60 |  |  | 55d |  |  | Влад Симоненко | 56h |  |
| 62 | 1.4.4.14 | **Сервис работы с вложениями** |  | 5d | 2013-07-11 | 2013-07-17 |  |  |  | 134d |  |  |  | 40h |  |
| 63 | 1.4.4.14.1 | Принято решение о проектировании сервиса обработки вложений | milestone | 0d | 2013-07-11 | 2013-07-11 |  |  |  | 134d | 0d | start no earlier than 2013-07-11 |  |  |  |
| 64 | 1.4.4.14.2 | API |  | 2d | 2013-07-11 | 2013-07-12 | 63 |  |  | 134d | 0d |  | Андрей Цветков | 16h |  |
| 65 | 1.4.4.14.3 | Реализация |  | 3d | 2013-07-15 | 2013-07-17 | 64 |  |  | 134d | 79d |  | Влад Симоненко | 24h |  |
| 66 | 1.4.4.15 | **Поиск** |  | 26d | 2013-07-29 | 2013-09-03 | 34 |  |  | 33d |  |  |  | 436h |  |
| 67 | 1.4.4.15.1 | Идея поиска оформлена | milestone | 0d | 2013-07-29 | 2013-07-29 |  |  |  | 33d | 0d | finish no earlier than 2013-07-29 |  |  |  |
| 68 | 1.4.4.15.2 | Поиск |  | 15d | 2013-07-30 | 2013-08-19 | 67 |  |  | 113d | 5d |  | Денис Митавский [50%]; Андрей Цветков | 180h |  |
| 69 | 1.4.4.15.3 | Полнотекстовый поиск |  | 20d | 2013-07-30 | 2013-08-26 | 67 |  |  | 108d | 0d |  | Влад Симоненко | 160h |  |
| 70 | 1.4.4.15.4 | Расширенный поиск |  | 6d | 2013-08-27 | 2013-09-03 | 68, 69 |  |  | 108d |  |  | Денис Митавский; Андрей Цветков | 96h |  |
| 71 | 1.4.4.16 | **Работа с отчетами** |  | 23d | 2013-07-03 | 2013-08-02 |  |  |  | 119d |  |  |  | 276h |  |
| 72 | 1.4.4.16.1 | JDBC-драйвер для системы построения отчётов |  | 8d | 2013-07-03 | 2013-07-12 | 50 |  |  | 120d | 0d |  | Денис Митавский [50%]; Андрей Цветков | 96h |  |
| 73 | 1.4.4.16.2 | Интеграция с Jasper Reports |  | 15d | 2013-07-15 | 2013-08-02 | 72 |  |  | 120d | 0d |  | Денис Митавский [50%]; Андрей Цветков | 180h |  |
| 74 | 1.4.4.17 | **GUI** |  | 70d? | 2013-07-08 A | 2013-10-11 |  | 3% | 67.57d? | 77d | 0d |  |  | 620h | 16h |
| 75 | 1.4.4.17.1 | Стилистическая адаптация компонентов GUI |  | 14d | 2013-07-11 | 2013-07-30 |  |  |  | 131d |  | start no earlier than 2013-07-11 | Тимофей Билый; Алексей Львов | 224h |  |
| 76 | 1.4.4.17.2 | Интеграция с JAAS/Аутентификация |  | 4d | 2013-07-08 A | 2013-07-11 A |  | 100% |  |  |  | start no earlier than 2013-07-08 | Денис Митавский [50%] | 16h | 16h |
| 77 | 1.4.4.17.3 | Разметка экрана |  | 1d | 2013-07-12 | 2013-07-12 | 76 |  |  | 72d |  |  | Денис Митавский [50%] | 4h |  |

Notes:
- 60: Начальная реализация модуля "документооборот" - замена лотуса
- 69: Включая взаимодействие с Solr
- 70: C учетом релевантности и оптимизации по объедененеию поисков аттрибутивного и полнотекстового
- 72: Используя язык запросов коллеций

| ID | WBS | Task | Duration | Start | Finish | Predecessors | Total slack | Free slack | Resources | Work |
| --- | --- | --- | --- | --- | --- | --- | --- | --- | --- | --- |
| 78 | 1.4.4.17.4 | **Панель навигации** | 8d | 2013-07-15 | 2013-07-24 |  | 71d |  |  | 32h |
| 79 | 1.4.4.17.4.1 | Проектирование - панель навигации | 2d | 2013-07-15 | 2013-07-16 | 76, 77 | 72d | 0d | Денис Митавский [50%] | 8h |
| 80 | 1.4.4.17.4.2 | Разработка - панель навигации | 6d | 2013-07-17 | 2013-07-24 | 76, 79 | 72d | 0d | Денис Митавский [50%] | 24h |
| 81 | 1.4.4.17.5 | GUI - архитектура активностей/дочерних активностей | 8d | 2013-07-25 | 2013-08-05 | 80 | 72d | 0d | Денис Митавский [50%] | 32h |
| 82 | 1.4.4.17.6 | GUI - отображение коллекций активность | 8d | 2013-08-06 | 2013-08-15 | 81 | 72d | 0d | Денис Митавский [50%] | 32h |
| 83 | 1.4.4.17.7 | GUI - действия | 8d | 2013-08-16 | 2013-08-27 | 82 | 72d | 0d | Денис Митавский [50%] | 32h |
| 84 | 1.4.4.17.8 | **Формы встроенного GUI** | 18d | 2013-08-28 | 2013-09-20 |  | 71d |  |  | 112h |
| 85 | 1.4.4.17.8.1 | Конфигурация | 3d | 2013-08-28 | 2013-08-30 | 83 | 72d | 0d | Денис Митавский [50%] | 12h |
| 86 | 1.4.4.17.8.2 | API | 5d | 2013-09-02 | 2013-09-06 | 85 | 72d | 0d | Денис Митавский [50%] | 20h |
| 87 | 1.4.4.17.8.3 | Реализация | 10d | 2013-09-09 | 2013-09-20 | 86 | 89d | 0d | Андрей Карандей | 80h |
| 88 | 1.4.4.17.9 | GUI - отображение отчётов | 8d | 2013-08-05 | 2013-08-14 | 73 | 120d |  | Андрей Цветков | 64h |
| 89 | 1.4.4.17.10 | **GUI - поиск** | 14d | 2013-09-09 | 2013-09-26 |  | 71d |  |  | 44h |
| 90 | 1.4.4.17.10.1 | GUI - поиск. Проектирование | 3d | 2013-09-09 | 2013-09-11 | 86 | 72d | 0d | Денис Митавский [50%] | 12h |
| 91 | 1.4.4.17.10.2 | GUI - поиск. Реализация | 4d | 2013-09-23 | 2013-09-26 | 87 | 89d |  | Андрей Карандей | 32h |
| 92 | 1.4.4.17.11 | **GUI - виджеты разработка (базовый набор)** | 25d? | 2013-09-09 | 2013-10-11 |  | 77d |  |  | 8h |
| 93 | 1.4.4.17.11.1 | Дата/время | 1d? | 2013-09-09 | 2013-09-09 | 86 | 102d |  | Тимофей Билый | 8h |
| 94 | 1.4.4.17.11.2 | Остальные | 25d? | 2013-09-09 | 2013-10-11 | 86 | 78d |  |  |  |
| 95 | 1.4.4.17.12 | **GUI - брендинг, стилизация, темы** | 5d | 2013-09-12 | 2013-09-18 |  | 71d |  |  | 20h |
| 96 | 1.4.4.17.12.1 | Концепция | 5d | 2013-09-12 | 2013-09-18 | 90 | 72d | 0d | Денис Митавский [50%] | 20h |
| 97 | 1.4.4.18 | Тестирование производительности | 25d | 2013-09-19 | 2013-10-23 | 96 | 72d |  | Денис Митавский; Валерий Мацукевич | 400h |
| 98 | 1.4.4.19 | Версионность/аудит | 8d | 2013-07-30 | 2013-08-08 | 35 | 85d | 0d | Валерий Мацукевич | 64h |
| 99 | 1.4.4.20 | Блокировки бизнес-объектов | 6d | 2013-08-09 | 2013-08-16 | 98 | 85d | 0d | Валерий Мацукевич | 48h |
| 100 | 1.4.4.21 | Описание структуры модуля Делопроизводство | 20d | 2013-07-30 | 2013-08-26 | 21, 15, 14, 67 | 36d | 0d | Владимир Панов | 160h |
| 101 | 1.4.4.22 | Уточнение состава и сроков работ | 2d | 2013-10-14 | 2013-10-15 | 74 | 78d |  | Андрей Пирожков; Денис Митавский; Тугушев Илья | 48h |
| 102 | 1.4.4.23 | Кросс-СУБД, поддержка Oracle | 15d | 2013-08-19 | 2013-09-06 | 99 | 85d | 0d | Валерий Мацукевич | 120h |
| 103 | 1.4.4.24 | SQL-trace | 5d | 2013-09-09 | 2013-09-13 | 102 | 85d | 0d | Влад Симоненко | 40h |
| 104 | 1.4.4.25 | Локализация (на уровне конфигурации) | 15d | 2013-09-16 | 2013-10-04 | 103 | 85d |  | Влад Симоненко | 120h |

Notes:
- 97: - полноценное, продуманное, конфигурируемое, полностью автоматизированное (вплоть до промежуточного сбора статистики в СУБД перед запуском тестов производительности) с автоматической генерацией таблиц и графиков, с поддержкой нагружающих потоков и т.п.
- 98: История модификации объекта / Версионность - на бизнес слой
- 102: Кросс-СУБД, поддержка Oracle
- 104: Поддержка ресурсных файлов - в расках конфигурирования ресурсных файлов / Подмена языка в интерфейсе (передача локали пользоввателю) -

| ID | WBS | Task | Duration | Start | Finish | Predecessors | Complete | Remaining | Total slack | Free slack | Resources | Work | Actual work |
| --- | --- | --- | --- | --- | --- | --- | --- | --- | --- | --- | --- | --- | --- |
| 105 | 1.4.4.26 | **Интеграция с системой управления учетными записями** | 14d | 2013-08-19 | 2013-09-05 | 99 |  |  | 105d |  |  | 56h |  |
| 106 | 1.4.4.26.1 | Интеграция с ActiveDirectory | 14d | 2013-08-19 | 2013-09-05 |  |  |  | 106d |  | Андрей Пирожков [50%] | 56h |  |
| 107 | 1.4.4.27 | **Расширение функций сервиса конфигурации** | 21d | 2013-07-09 A | 2013-08-06 |  | 14% | 18d | 112d |  |  | 296h | 24h |
| 108 | 1.4.4.27.1 | Расширяемость конфигурации | 5d | 2013-07-09 A | 2013-07-15 | 37 | 60% | 2d | 85d | 0d | Валерий Мацукевич | 40h | 24h |
| 109 | 1.4.4.27.2 | Изменение и дополнение конфигурации системы | 16d | 2013-07-16 | 2013-08-06 | 108 |  |  | 113d | 0d | Андрей Пирожков; Роман Митинков | 256h |  |
| 110 | 1.4.4.28 | **Сервис для работы с системным журналом** | 15d | 2013-08-07 | 2013-08-27 | 109 |  |  | 112d |  |  | 120h |  |
| 111 | 1.4.4.28.1 | Ведение журнала действий пользователей и действий с объектами системы | 10d | 2013-08-07 | 2013-08-20 |  |  |  | 113d | 0d | Андрей Карандей | 80h |  |
| 112 | 1.4.4.28.2 | Настройка уровня логирования | 5d | 2013-08-21 | 2013-08-27 | 111 |  |  | 113d |  | Андрей Карандей | 40h |  |
| 113 | 1.4.5 | **Разработка** | 204d | 2013-06-11 A | 2014-03-21 | 15 | 3% | 197.12d | 32d |  |  | 6676h | 240h |
| 114 | 1.4.5.1 | Контроль и корректировка технических решений "Архитектурный комитет" | 203d | 2013-06-11 A | 2014-03-21 |  | 10% | 183d | 32d |  | Тугушев Илья [20%]; Андрей Пирожков [20%]; Денис Митавский [20%]; WEB-дизайнер [20%]; Аналитик [20%]; Владимир Панов [50%] | 2436h | 240h |
| 115 | 1.4.5.2 | **Разработка серверной логики модуля CMJ** | 60d | 2013-08-27 | 2013-11-18 | 15, 42, 100 |  |  | 33d | 0d |  | 1920h |  |
| 116 | 1.4.5.2.1 | Разработка схем документов модуля CMJ | 40d | 2013-08-27 | 2013-10-21 |  |  |  | 33d | 0d | Андрей Пирожков [50%]; Влад Симоненко | 480h |  |
| 117 | 1.4.5.2.2 | Разработка ЖЦ процессов модуля (WF) | 20d | 2013-10-22 | 2013-11-18 | 116 |  |  | 33d | 0d | Влад Симоненко; Андрей Пирожков [50%] | 240h |  |
| 118 | 1.4.5.2.3 | Разработка логики бизнес- действий модуля CMJ | 60d | 2013-08-27 | 2013-11-18 |  |  |  | 33d | 0d | Алексей Львов; Андрей Пирожков [50%] | 720h |  |
| 119 | 1.4.5.2.4 | Разработка процессов автоматизации для модуля CMJ | 40d | 2013-08-27 | 2013-10-21 |  |  |  | 91d |  | Андрей Карандей | 320h |  |
| 120 | 1.4.5.2.5 | Разработка модели прав доступа (контекстные роли) | 20d | 2013-10-22 | 2013-11-18 | 116 |  |  | 71d |  | Андрей Карандей | 160h |  |
| 121 | 1.4.5.3 | **Разработка Форм для АРМ тематических администраторов** | 40d | 2013-11-06 | 2013-12-31 | 60 |  |  | 90d |  |  | 960h |  |
| 122 | 1.4.5.3.1 | **Подготовка работы со списками значений** | 40d | 2013-11-06 | 2013-12-31 |  |  |  | 90d |  |  | 640h |  |
| 123 | 1.4.5.3.1.1 | Разработка функционала учета организационно штатной структуры | 40d | 2013-11-06 | 2013-12-31 |  |  |  | 90d |  | Андрей Цветков | 320h |  |
| 124 | 1.4.5.3.1.2 | Разработка функционала с рубрикаторами (сложные справочники) | 20d | 2013-11-06 | 2013-12-03 |  |  |  | 90d | 0d | Валерий Мацукевич | 160h |  |
| 125 | 1.4.5.3.1.3 | Разработка функционала для работы с словарями данных (простые, линейные справочники) | 20d | 2013-12-04 | 2013-12-31 | 124 |  |  | 90d |  | Валерий Мацукевич | 160h |  |
| 126 | 1.4.5.3.2 | Разработка форм для работы в GUI (настройки форм) | 15d | 2013-11-06 | 2013-11-26 |  |  |  | 110d | 0d | Java разработчик3 | 120h |  |
| 127 | 1.4.5.3.3 | Разработка структуры рабочего места АРМ | 5d | 2013-11-27 | 2013-12-03 | 116, 126 |  |  | 110d |  | Java разработчик3 | 40h |  |
| 128 | 1.4.5.3.4 | Разработка специфичных для форм АРМ элементов GUI | 20d | 2013-11-06 | 2013-12-03 |  |  |  | 110d |  | Java разработчик4 | 160h |  |
| 129 | 1.4.5.4 | Подготовка отчетов | 40d | 2013-11-19 | 2014-01-13 | 116, 118, 117 |  |  | 33d | 0d | Влад Симоненко; Алексей Львов; Андрей Карандей | 960h |  |
| 130 | 1.4.5.5 | Сопряжение с мобильным клиентом СМ4 | 50d | 2013-11-19 | 2014-01-27 | 115 |  |  | 71d |  | Java разработчик3 | 400h |  |

Notes:
- 110: Сервис для работы с системным журналомВедение журнала действий пользователей и действий с объектами системы
- 111: Ведение журнала действий пользователей и действий с объектами системы

| ID | WBS | Task | Type | Duration | Start | Finish | Predecessors | Total slack | Free slack | Constraint | Resources | Work |
| --- | --- | --- | --- | --- | --- | --- | --- | --- | --- | --- | --- | --- |
| 131 | 1.4.6 | **Тестирование** |  | 90d? | 2013-11-15 | 2014-03-20 | 20 | 33d | 0d |  |  | 2544h |
| 132 | 1.4.6.1 | **Функциональное тестирование** |  | 75d? | 2013-11-15 | 2014-02-27 |  | 48d |  |  |  | 2224h |
| 133 | 1.4.6.1.1 | Подготовка ПМИ |  | 5d | 2013-11-15 | 2013-11-21 |  | 55d | 0d |  | Тест Аналитик | 40h |
| 134 | 1.4.6.1.2 | Разработка "сценариев тестирования" |  | 15d | 2013-11-15 | 2013-12-05 |  | 60d | 22d |  | Тест Аналитик | 120h |
| 135 | 1.4.6.1.3 | Разработка модели нагрузки для тестирования |  | 10d | 2013-11-22 | 2013-12-05 | 133 | 60d | 22d |  | Тест Аналитик | 80h |
| 136 | 1.4.6.1.4 | Адаптация автоматизированных сценариев от СМ4 для создания нагрузки |  | 25d | 2013-11-22 | 2013-12-26 | 133 | 55d | 22d |  | Влад Симоненко | 200h |
| 137 | 1.4.6.1.5 | **Проведение тестирования** |  | 38d? | 2014-01-07 | 2014-02-27 | 134, 135 | 38d | 0d |  |  | 1784h |
| 138 | 1.4.6.1.5.1 | **Подготовка среды тестирования** |  | 15d? | 2014-01-07 | 2014-01-27 |  | 38d |  |  |  | 200h |
| 139 | 1.4.6.1.5.1.1 | Разворачивание системы |  | 5d? | 2014-01-07 | 2014-01-14 | 141SF | 81d | 0d |  | Влад Симоненко | 40h |
| 140 | 1.4.6.1.5.1.2 | Система готова для подключения инструментов мониторинга | milestone | 0d | 2014-01-14 | 2014-01-14 | 139 | 81d |  |  |  |  |
| 141 | 1.4.6.1.5.1.3 | Наполнение данными |  | 10d? | 2014-01-14 | 2014-01-27 | 129 | 33d | 0d |  | Влад Симоненко; Java разработчик6 | 160h |
| 142 | 1.4.6.1.5.2 | Среда тестирования готова | milestone | 0d | 2014-01-27 | 2014-01-27 | 141, 136 | 33d | 0d | start no earlier than 2012-05-24 |  |  |
| 143 | 1.4.6.1.5.3 | Проведение тестирования |  | 10d | 2014-01-28 | 2014-02-10 | 142 | 33d | 0d |  | Тест Аналитик; Тестировщик [200%] | 240h |
| 144 | 1.4.6.1.5.4 | **Обработка результатов тестирования и внесение изменений в модуль** |  | 15d | 2014-02-07 | 2014-02-27 | 143FS-2d | 33d |  |  |  | 1344h |
| 145 | 1.4.6.1.5.4.1 | Устранение замечаний по результатам функционального тестирования |  | 15d | 2014-02-07 | 2014-02-27 |  | 33d | 0d |  | Java разработчик5; Влад Симоненко [300%]; Валерий Мацукевич; Java разработчик3; Java разработчик4; Андрей Карандей; Алексей Львов; Андрей Цветков | 1200h |
| 146 | 1.4.6.1.5.4.2 | Проверка устранения замечаний |  | 6d | 2014-02-20 | 2014-02-27 | 145FS-6d | 33d | 0d |  | Тест Аналитик; Тестировщик [200%] | 144h |
| 147 | 1.4.6.2 | **Нагрузочное тестирование** |  | 28d | 2014-02-10 | 2014-03-20 | 133 | 33d |  |  |  | 320h |
| 148 | 1.4.6.2.1 | Стенд для нагрузочного тестирования подготовлен | milestone | 0d | 2014-02-10 | 2014-02-10 | 143 | 46d | 13d | finish no earlier than 2012-06-09 |  |  |
| 149 | 1.4.6.2.2 | Проведения нагрузочного тестирования |  | 10d | 2014-02-28 | 2014-03-13 | 146, 136, 148 | 33d | 0d |  | Влад Симоненко; Тест Аналитик; Тестировщик | 240h |
| 150 | 1.4.6.2.3 | Обработка результатов нагрузочного тестирования |  | 5d | 2014-03-14 | 2014-03-20 | 149 | 33d |  |  | Тест Аналитик; Тестировщик | 80h |
| 151 | 1.4.7 | Разработка модуля "Делопроизводство" завершена | milestone | 0d | 2014-03-20 | 2014-03-20 | 131 | 33d |  |  |  |  |
| 152 | 1.4.8 | **Подготовка документации** |  | 80d | 2013-11-15 | 2014-03-06 | 131SS | 43d |  |  |  | 800h |
| 153 | 1.4.8.1 | Разработка документа "Концепция системы " |  | 40d | 2013-11-15 | 2014-01-09 |  | 43d | 0d |  | Владимир Панов | 320h |
| 154 | 1.4.8.2 | Разработка "Software Architecture Document" |  | 40d | 2014-01-10 | 2014-03-06 | 153 | 43d | 0d |  | Владимир Панов | 320h |
| 155 | 1.4.8.3 | Документы подготовлены | milestone | 0d | 2014-03-06 | 2014-03-06 | 154 | 43d |  |  |  |  |
| 156 | 1.4.8.4 | Разработка "Software Architecture Document" для модулей первой очереди |  | 20d | 2013-11-15 | 2013-12-12 |  | 103d | 0d |  | Технический писатель | 160h |
| 157 | 1.4.8.5 | Документы подготовлены | milestone | 0d | 2013-12-12 | 2013-12-12 | 156 | 103d |  |  |  |  |

| ID | WBS | Task | Duration | Start | Finish | Predecessors | Total slack | Free slack | Resources | Work |
| --- | --- | --- | --- | --- | --- | --- | --- | --- | --- | --- |
| 158 | 1.5 | **Проверка работоспособности решения - Организация демонстрации** | 25d? | 2014-01-07 | 2014-02-10 | 137SS | 61d |  |  | 448h |
| 159 | 1.5.1 | Подготовка стенда | 3d | 2014-01-07 | 2014-01-09 | 160SF | 83d |  | Влад Симоненко; Аналитик | 48h |
| 160 | 1.5.2 | Подготовка прототипа | 20d? | 2014-01-07 | 2014-02-03 |  | 61d | 0d | Влад Симоненко; Аналитик | 320h |
| 161 | 1.5.3 | Проведение демонстраций | 3d | 2014-02-04 | 2014-02-06 | 160 | 61d | 0d | Влад Симоненко; Аналитик | 48h |
| 162 | 1.5.4 | Анализ результатов - выводы | 2d | 2014-02-07 | 2014-02-10 | 161 | 61d |  | Влад Симоненко; Аналитик | 32h |
